# Ke hoach chi tiet - Dai Viet

Schedule from MS Project, 2010-10-01 to 2011-05-16.
SSP

## Calendars

- Standard: Mon-Fri 08:00-12:00, 13:00-17:00; Sat-Sun off. Exceptions (off unless hours are given): 2010-10-09 08:00-12:00, 13:00-17:00, 2010-10-16 08:00-12:00, 13:00-17:00, 2010-10-23 08:00-12:00, 13:00-17:00, 2010-10-30 08:00-12:00, 13:00-17:00, 2010-11-06 08:00-12:00, 13:00-17:00, 2010-11-13 08:00-12:00, 13:00-17:00, 2010-11-20 08:00-12:00, 13:00-17:00, 2010-11-27 08:00-12:00, 13:00-17:00, 2010-12-04 08:00-12:00, 13:00-17:00 (Lam ngoai gio), 2010-12-11 08:00-12:00, 13:00-17:00 (Lam ngoai gio), 2010-12-18 08:00-12:00, 13:00-17:00 (Lam ngoai gio), 2010-12-25 08:00-12:00, 13:00-17:00 (Lam ngoai gio), 2011-01-03.

## Resources

| Resource |
| --- |
| Chautqn |
| Thaolb |
| Thuyttb |
| Hieunt |
| Hoaipt |
| hoiht |
| vienpm |
| 75 |
| khach hang |

## Schedule

| ID | WBS | Task | Duration | Start | Finish | Predecessors | Total slack | Free slack | Constraint | Resources | Work |
| --- | --- | --- | --- | --- | --- | --- | --- | --- | --- | --- | --- |
| 1 | 1 | **KẾ HOẠCH DỰ ÁN NHỰA ĐẠT HÒA -** | 173d? | 2010-10-01 | 2011-05-16 |  | 0d |  |  |  | 1340h |
| 2 | 1.1 | Quản lý dự án | 140d | 2010-10-01 | 2011-03-30 |  | 1d |  | finish no earlier than 2011-03-30 | Thuyttb [10%] | 112h |
| 3 | 1.2 | Xem xét lại yêu cầu, chuẩn bị bắt đầu dự án | 1.33d | 2010-10-01 | 2010-10-04 |  | 86d |  | start no earlier than 2010-10-01 | Thuyttb [75%] | 8h |
| 4 | 1.3 | **Lập trình chức năng** | 67.33d? | 2010-10-11 | 2010-12-28 |  | 98.67d |  |  |  | 680h |
| 5 | 1.3.1 | **Quản lý chiết khấu và khai báo giá bán** | 10d? | 2010-10-11 | 2010-10-21 |  | 98.67d |  |  |  | 14h |
| 6 | 1.3.1.1 | Lập hồ sơ thiết kế - Quản lý chiết khấu và khai báo giá bán | 0.33d? | 2010-10-11 | 2010-10-11 |  | 62.67d | 0d | start no earlier than 2010-10-11 | Thuyttb [75%] | 2h |
| 7 | 1.3.1.2 | Bảng quy định chiết khấu cho khách hàng theo từng nhóm hàng | 1d | 2010-10-20 | 2010-10-20 |  | 97.67d | 0d | start no earlier than 2010-10-20 | vienpm [75%] | 6h |
| 8 | 1.3.1.3 | Bảng thiết lập giá cho từng hàng hóa | 1d | 2010-10-21 | 2010-10-21 | 7 | 105d |  |  | vienpm [75%] | 6h |
| 9 | 1.3.2 | **Quy đổi đơn vị tính** | 17d? | 2010-10-11 | 2010-10-30 |  | 139.33d |  |  |  | 56h |
| 10 | 1.3.2.1 | Lập hồ sơ thiết kế - Quy đổi đơn vị tính và các báo cáo liên quan | 2d? | 2010-10-11 | 2010-10-13 | 6 | 131.67d |  | start no earlier than 2010-10-11 | Thuyttb [75%] | 12h |
| 11 | 1.3.2.2 | Thiết lập hệ thống quy đổi đơn vị tính (từ ĐVT1 sang ĐVT2), áp dụng chung cho tất cả các hàng hóa | 1.33d? | 2010-10-22 | 2010-10-23 | 8 | 97.67d | 0d | start no earlier than 2010-10-20 | vienpm [75%] | 8h |
| 12 | 1.3.2.3 | Sửa màn hình nhập liệu khi nhập (số lượng 1), chọn ĐVT và tự động quy đổi sang ĐVT mặc định là KG (số lượng 2) | 1.33d | 2010-10-23 | 2010-10-25 | 11 | 97.67d | 0d |  | vienpm [75%] | 8h |
| 13 | 1.3.2.4 | Thiết kế báo cáo thẻ kho hàng hóa xem theo ĐVT bất kỳ cho tất cả các mặt hàng | 3.33d | 2010-10-25 | 2010-10-28 | 12 | 97.67d | 0d |  | vienpm [75%] | 20h |
| 14 | 1.3.2.5 | Báo cáo NXT đặc thù hiển thị theo số lượng và ĐVT lúc nhập liệu (từ ĐVT bất kỳ ra KG) | 1.33d? | 2010-10-29 | 2010-10-30 | 13 | 97.67d |  |  | vienpm [75%] | 8h |
| 15 | 1.3.3 | **Quản lý mua hàng** | 21d? | 2010-10-11 | 2010-11-04 |  | 98.67d |  |  |  | 126h |
| 16 | 1.3.3.1 | Lập hồ sơ thiết kế - quản lý mua hàng | 5d? | 2010-10-11 | 2010-10-16 | 6 | 56d |  |  | Thuyttb [75%] | 30h |
| 17 | 1.3.3.2 | Quản lý hợp đồng mua hàng | 5.33d | 2010-10-16 | 2010-10-22 | 16 | 62.67d | 0d | start no earlier than 2010-10-01 | Thuyttb [75%] | 32h |
| 18 | 1.3.3.3 | Quản lý tình hình nhập hàng mua | 5.33d | 2010-10-22 | 2010-10-28 | 17 | 62.67d | 0d |  | Thuyttb [75%] | 32h |
| 19 | 1.3.3.4 | Quản lý hóa đơn mua hàng | 5.33d | 2010-10-29 | 2010-11-04 | 18 | 56d | 0d |  | Thuyttb [75%] | 32h |
| 20 | 1.3.4 | **Quản lý bán hàng** | 18.33d? | 2010-11-04 | 2010-11-25 |  | 98.67d |  |  |  | 110h |
| 21 | 1.3.4.1 | Lập hồ sơ thiết kế - quản lý bán hàng | 6.33d? | 2010-11-04 | 2010-11-11 | 19 | 62.67d | 0d |  | Thuyttb [75%] | 38h |
| 22 | 1.3.4.2 | Quản lý hợp đồng bán hàng | 4d | 2010-11-11 | 2010-11-16 | 21 | 62.67d | 0d |  | Thuyttb [75%] | 24h |
| 23 | 1.3.4.3 | Quản lý lệnh xuất kho | 4d | 2010-11-16 | 2010-11-20 | 22 | 62.67d | 0d |  | Thuyttb [75%] | 24h |
| 24 | 1.3.4.4 | Lập hóa đơn hoặc phiếu giao hàng | 4d | 2010-11-20 | 2010-11-25 | 23 | 62.67d |  |  | Thuyttb [75%] | 24h |

| ID | WBS | Task | Duration | Start | Finish | Predecessors | Total slack | Free slack | Constraint | Resources | Work |
| --- | --- | --- | --- | --- | --- | --- | --- | --- | --- | --- | --- |
| 25 | 1.3.5 | **Xử lý hóa đơn** | 8d | 2010-12-01 | 2010-12-09 |  | 74d |  |  |  | 32h |
| 26 | 1.3.5.1 | Lập hóa đơn cho nhiều phiếu giao hàng | 4d | 2010-12-01 | 2010-12-04 |  | 74d | 0d | start no earlier than 2010-12-01 | Hoaipt [50%] | 16h |
| 27 | 1.3.5.2 | Xử lý tách hóa đơn khi số mặt hàng trong hóa đơn vượt qúa số lượng cho phép | 4d | 2010-12-06 | 2010-12-09 | 26 | 74d | 0d |  | Hoaipt [50%] | 16h |
| 28 | 1.3.6 | **Báo cáo** | 19d? | 2010-10-30 | 2010-11-22 |  | 129.67d |  |  |  | 114h |
| 29 | 1.3.6.1 | 1_Báo cáo doanh số và công nợ | 1d | 2010-10-30 | 2010-11-01 | 14 | 97.67d | 0d | start no earlier than 2010-10-29 | vienpm [75%] | 6h |
| 30 | 1.3.6.2 | 2_Hóa đơn kiêm phiếu xuất kho | 1.33d | 2010-11-01 | 2010-11-02 | 29 | 97.67d | 0d |  | vienpm [75%] | 8h |
| 31 | 1.3.6.3 | 9_Báo cáo nhập kho thành phẩm từ sản xuất | 1d | 2010-11-02 | 2010-11-03 | 30 | 97.67d | 0d |  | vienpm [75%] | 6h |
| 32 | 1.3.6.4 | 11_Báo cáo doanh thu theo từng đơn vị | 0.33d | 2010-11-03 | 2010-11-03 | 31 | 97.67d | 0d |  | vienpm [75%] | 2h |
| 33 | 1.3.6.5 | 12_sổ theo dõi hợp đồng nhập khẩu | 0.67d | 2010-11-04 | 2010-11-04 | 32 | 97.67d | 0d |  | vienpm [75%] | 4h |
| 34 | 1.3.6.6 | Mẫu in phiếu nhập xuất TSCĐ thể hiện thông tin người giao, người nhận | 1.33d? | 2010-11-04 | 2010-11-05 | 33 | 97.67d | 0d |  | vienpm [75%] | 8h |
| 35 | 1.3.6.7 | Báo cáo công nợ theo từng hợp đồng, hóa đơn | 2.67d | 2010-11-06 | 2010-11-09 | 34 | 97.67d | 0d |  | vienpm [75%] | 16h |
| 36 | 1.3.6.8 | Báo cáo công nợ đã thanh toán và công nợ đến hạn | 1.33d? | 2010-11-09 | 2010-11-10 | 35 | 97.67d | 0d |  | vienpm [75%] | 8h |
| 37 | 1.3.6.9 | Báo cáo KQHDKD (theo mẫu QĐ15) có thêm cột cộng lũy kế | 0.67d | 2010-11-11 | 2010-11-11 | 36 | 97.67d | 0d |  | vienpm [75%] | 4h |
| 38 | 1.3.6.10 | Báo cáo phân tích khấu hao TSCĐ theo nhóm | 1.33d? | 2010-11-11 | 2010-11-12 | 37 | 97.67d | 0d |  | vienpm [75%] | 8h |
| 39 | 1.3.6.11 | 3_Thư đòi nợ | 3.33d | 2010-11-13 | 2010-11-17 | 38 | 97.67d | 0d |  | vienpm [75%] | 20h |
| 40 | 1.3.6.12 | 6_Đơn đặt hàng | 1.33d? | 2010-11-17 | 2010-11-18 | 39 | 97.67d | 0d |  | vienpm [75%] | 8h |
| 41 | 1.3.6.13 | 4_Lệnh xuất kho | 1.33d | 2010-11-18 | 2010-11-19 | 40 | 97.67d | 0d |  | vienpm [75%] | 8h |
| 42 | 1.3.6.14 | 5_Phiếu giao hàng | 1.33d | 2010-11-20 | 2010-11-22 | 41 | 97.67d |  |  | vienpm [75%] | 8h |
| 43 | 1.3.7 | **Chức năng giá thành** | 27.67d? | 2010-11-25 | 2010-12-28 |  | 98.67d |  |  |  | 196h |
| 44 | 1.3.7.1 | Lập hồ sơ thiết kế - Chức năng giá thành | 4d? | 2010-11-25 | 2010-11-30 | 24 | 62.67d | 0d |  | Thuyttb [75%] | 24h |
| 45 | 1.3.7.2 | Tập hợp chi phí theo nhóm mặt hàng hoặc xưởng, phân bổ cho từng mặt hàng theo trọng lượng thành phẩm nhập kho | 16d | 2010-11-30 | 2010-12-18 | 44 | 62.67d | 0d |  | Thuyttb [75%] | 96h |
| 46 | 1.3.7.3 | Lập hồ sơ thiết kế cho các báo cáo 7,8,10,13 | 1d? | 2010-12-18 | 2010-12-20 | 45 | 66.67d | 0d |  |  | 12h |
| 47 | 1.3.7.4 | 7_Báo cáo giá thành sản phẩm theo đơn vị | 2d? | 2010-12-20 | 2010-12-21 | 53 | 68d | 0d |  | Hoaipt [50%] | 8h |
| 48 | 1.3.7.5 | 8_Báo cáo doanh thu chi phí theo từng cửa hàng | 4d | 2010-12-22 | 2010-12-25 | 47 | 68d |  |  | Hoaipt [50%] | 16h |
| 49 | 1.3.7.6 | 10_Báo cáo lãi lỗ theo nhóm hàng | 3.33d | 2010-12-20 | 2010-12-23 | 46 | 66.67d | 0d |  | Thuyttb [75%] | 20h |
| 50 | 1.3.7.7 | 13_Báo cáo hao hụt NVL | 3.33d | 2010-12-24 | 2010-12-28 | 49 | 66.67d |  |  | Thuyttb [75%] | 20h |

Notes:
- 29: theo mẫu KH
- 30: in rơi
- 31: theo mẫu KH
- 34: SSP tự thiết kế
- 35: SSP tự thiết kế
- 36: SSP tự thiết kế
- 37: Sửa mẫu QĐ15
- 38: SSP tự thiết kế
- 39: theo mẫu KH
- 40: in rơi
- 41: theo mẫu KH
- 42: theo mẫu KH
- 47: theo mẫu KH
- 48: theo mẫu KH
- 49: theo mẫu KH
- 50: Theo phụ lục HĐ

| ID | WBS | Task | Type | Duration | Start | Finish | Predecessors | Total slack | Free slack | Constraint | Resources | Work |
| --- | --- | --- | --- | --- | --- | --- | --- | --- | --- | --- | --- | --- |
| 51 | 1.3.8 | **Tích hợp dữ liệu giữa các DB của các chi nhánh** |  | 8d? | 2010-12-10 | 2010-12-18 |  | 100d |  |  |  | 32h |
| 52 | 1.3.8.1 | Lập hồ sơ thiết kế - Tích hợp dữ liệu |  | 2d? | 2010-12-10 | 2010-12-11 | 27 | 74d | 0d | start no earlier than 2010-12-01 | Hoaipt [50%] | 8h |
| 53 | 1.3.8.2 | Tool chuyển dữ liệu từ DB nội bộ về DB thuế (chuyển danh mục và các phiếu có hóa đơn) |  | 6d | 2010-12-13 | 2010-12-18 | 52 | 74d |  |  | Hoaipt [50%] | 24h |
| 54 | 1.4 | **Test** |  | 79d? | 2010-10-25 | 2011-01-31 |  | 75d |  |  |  | 316h |
| 55 | 1.4.1 | **Quản lý chiết khấu và khai báo giá bán** |  | 1d | 2010-10-25 | 2010-10-25 |  | 77d |  |  |  | 4h |
| 56 | 1.4.1.1 | Bảng quy định chiết khấu cho khách hàng theo từng nhóm hàng |  | 0.5d | 2010-10-25 | 2010-10-25 |  | 77d | 0d | start no earlier than 2010-10-25 | hoiht [50%] | 2h |
| 57 | 1.4.1.2 | Bảng thiết lập giá cho từng hàng hóa |  | 0.5d | 2010-10-25 | 2010-10-25 | 56 | 77d | 0d |  | hoiht [50%] | 2h |
| 58 | 1.4.2 | **Quy đổi đơn vị tính** |  | 12d? | 2010-10-26 | 2010-11-08 |  | 109d |  |  |  | 16h |
| 59 | 1.4.2.1 | Thiết lập hệ thống quy đổi đơn vị tính (từ ĐVT1 sang ĐVT2), áp dụng chung cho tất cả các hàng hóa |  | 1d? | 2010-10-26 | 2010-10-26 | 57 | 77d | 0d |  | hoiht [50%] | 4h |
| 60 | 1.4.2.2 | Sửa màn hình nhập liệu khi nhập (số lượng 1), chọn ĐVT và tự động quy đổi sang ĐVT mặc định là KG (số lượng 2) |  | 1d | 2010-10-27 | 2010-10-27 | 59 | 119d |  |  | hoiht [50%] | 4h |
| 61 | 1.4.2.3 | Thiết kế báo cáo thẻ kho hàng hóa xem theo ĐVT bất kỳ cho tất cả các mặt hàng |  | 1d | 2010-11-06 | 2010-11-06 | 66 | 77d | 0d |  | hoiht [50%] | 4h |
| 62 | 1.4.2.4 | Báo cáo NXT đặc thù hiển thị theo số lượng và ĐVT lúc nhập liệu (từ ĐVT bất kỳ ra KG) | milestone | 1d? | 2010-11-08 | 2010-11-08 | 61 | 77d | 0d |  | hoiht [50%] | 4h |
| 63 | 1.4.3 | **Quản lý mua hàng** |  | 9d | 2010-10-27 | 2010-11-05 |  | 77d |  |  |  | 36h |
| 64 | 1.4.3.1 | Quản lý hợp đồng mua hàng |  | 3d | 2010-10-27 | 2010-10-29 | 59 | 77d | 0d | start no earlier than 2010-10-27 | hoiht [50%] | 12h |
| 65 | 1.4.3.2 | Quản lý tình hình nhập hàng mua |  | 3d | 2010-10-30 | 2010-11-02 | 64 | 77d | 0d | start no earlier than 2010-10-11 | hoiht [50%] | 12h |
| 66 | 1.4.3.3 | Quản lý hóa đơn mua hàng | milestone | 3d | 2010-11-03 | 2010-11-05 | 65 | 77d | 0d | start no earlier than 2010-10-14 | hoiht [50%] | 12h |
| 67 | 1.4.4 | **Bao cao** |  | 14d? | 2010-11-09 | 2010-11-24 |  | 109d |  |  |  | 56h |
| 68 | 1.4.4.1 | 1_Báo cáo doanh số và công nợ |  | 1d | 2010-11-09 | 2010-11-09 | 62 | 77d | 0d |  | hoiht [50%] | 4h |
| 69 | 1.4.4.2 | 2_Hóa đơn kiêm phiếu xuất kho |  | 1d | 2010-11-10 | 2010-11-10 | 68 | 77d | 0d |  | hoiht [50%] | 4h |
| 70 | 1.4.4.3 | 9_Báo cáo nhập kho thành phẩm từ sản xuất |  | 1d | 2010-11-11 | 2010-11-11 | 69 | 77d | 0d |  | hoiht [50%] | 4h |
| 71 | 1.4.4.4 | 11_Báo cáo doanh thu theo từng đơn vị |  | 1d | 2010-11-12 | 2010-11-12 | 70 | 77d | 0d |  | hoiht [50%] | 4h |
| 72 | 1.4.4.5 | 12_sổ theo dõi hợp đồng nhập khẩu |  | 1d | 2010-11-13 | 2010-11-13 | 71 | 77d | 0d |  | hoiht [50%] | 4h |
| 73 | 1.4.4.6 | Mẫu in phiếu nhập xuất TSCĐ thể hiện thông tin người giao, người nhận |  | 1d? | 2010-11-15 | 2010-11-15 | 72 | 77d | 0d |  | hoiht [50%] | 4h |
| 74 | 1.4.4.7 | Báo cáo công nợ theo từng hợp đồng, hóa đơn |  | 1d | 2010-11-16 | 2010-11-16 | 73 | 77d | 0d |  | hoiht [50%] | 4h |
| 75 | 1.4.4.8 | Báo cáo công nợ đã thanh toán và công nợ đến hạn |  | 1d? | 2010-11-17 | 2010-11-17 | 74 | 77d | 0d |  | hoiht [50%] | 4h |
| 76 | 1.4.4.9 | Báo cáo KQHDKD (theo mẫu QĐ15) có thêm cột cộng lũy kế |  | 1d | 2010-11-18 | 2010-11-18 | 75 | 77d | 0d |  | hoiht [50%] | 4h |
| 77 | 1.4.4.10 | Báo cáo phân tích khấu hao TSCĐ theo nhóm |  | 1d? | 2010-11-19 | 2010-11-19 | 76 | 77d | 0d |  | hoiht [50%] | 4h |
| 78 | 1.4.4.11 | 4_Lệnh xuất kho |  | 1d | 2010-11-20 | 2010-11-20 | 77 | 77d | 0d |  | hoiht [50%] | 4h |
| 79 | 1.4.4.12 | 5_Phiếu giao hàng |  | 1d | 2010-11-22 | 2010-11-22 | 78 | 77d | 0d |  | hoiht [50%] | 4h |
| 80 | 1.4.4.13 | 6_Đơn đặt hàng |  | 1d? | 2010-11-23 | 2010-11-23 | 79 | 77d | 0d |  | hoiht [50%] | 4h |
| 81 | 1.4.4.14 | 3_Thư đòi nợ |  | 1d | 2010-11-24 | 2010-11-24 | 80 | 77d | 1d |  | hoiht [50%] | 4h |

Notes:
- 68: theo mẫu KH
- 69: in rơi
- 70: theo mẫu KH
- 73: SSP tự thiết kế
- 74: SSP tự thiết kế
- 75: SSP tự thiết kế
- 76: Sửa mẫu QĐ15
- 77: SSP tự thiết kế
- 78: theo mẫu KH
- 79: theo mẫu KH
- 80: in rơi
- 81: theo mẫu KH

| ID | WBS | Task | Type | Duration | Start | Finish | Predecessors | Total slack | Free slack | Constraint | Resources | Work |
| --- | --- | --- | --- | --- | --- | --- | --- | --- | --- | --- | --- | --- |
| 82 | 1.4.5 | **Quản lý bán hàng** |  | 6d | 2010-11-26 | 2010-12-02 |  | 76d |  |  |  | 24h |
| 83 | 1.4.5.1 | Quản lý hợp đồng bán hàng |  | 2d | 2010-11-26 | 2010-11-27 | 81 | 76d | 0d | start no earlier than 2010-11-26 | hoiht [50%] | 8h |
| 84 | 1.4.5.2 | Quản lý lệnh xuất kho |  | 2d | 2010-11-29 | 2010-11-30 | 83 | 76d | 0d | start no earlier than 2010-10-23 | hoiht [50%] | 8h |
| 85 | 1.4.5.3 | Lập hóa đơn hoặc phiếu giao hàng |  | 2d | 2010-12-01 | 2010-12-02 | 84 | 76d |  | start no earlier than 2010-11-01 | hoiht [50%] | 8h |
| 86 | 1.4.6 | **Xử lý hóa đơn** |  | 4d | 2010-12-06 | 2010-12-09 |  | 74d |  |  |  | 16h |
| 87 | 1.4.6.1 | Lập hóa đơn cho nhiều phiếu giao hàng |  | 2d | 2010-12-06 | 2010-12-07 | 85 | 74d | 0d | start no earlier than 2010-12-06 | hoiht [50%] | 8h |
| 88 | 1.4.6.2 | Xử lý tách hóa đơn khi số mặt hàng trong hóa đơn vượt qúa số lượng cho phép | milestone | 2d | 2010-12-08 | 2010-12-09 | 87 | 74d |  |  | hoiht [50%] | 8h |
| 89 | 1.4.7 | Dự phòng |  | 8d? | 2010-12-10 | 2010-12-18 | 88 | 74d |  | finish no earlier than 2010-12-18 |  | 64h |
| 90 | 1.4.8 | **Chức năng giá thành** |  | 19d? | 2010-12-27 | 2011-01-21 |  | 75d |  |  |  | 76h |
| 91 | 1.4.8.1 | Tập hợp chi phí theo nhóm mặt hàng hoặc xưởng, phân bổ cho từng mặt hàng theo trọng lượng thành phẩm nhập kho |  | 12d | 2010-12-27 | 2011-01-12 | 100 | 43d | 0d | start no earlier than 2010-12-27 | hoiht [50%] | 48h |
| 92 | 1.4.8.2 | 7_Báo cáo giá thành sản phẩm theo đơn vị |  | 1d? | 2011-01-13 | 2011-01-13 | 91 | 43d | 0d |  | hoiht [50%] | 4h |
| 93 | 1.4.8.3 | 8_Báo cáo doanh thu chi phí theo từng cửa hàng |  | 1d | 2011-01-14 | 2011-01-14 | 92 | 43d | 0d |  | hoiht [50%] | 4h |
| 94 | 1.4.8.4 | 10_Báo cáo lãi lỗ theo nhóm hàng |  | 1d | 2011-01-17 | 2011-01-17 | 93 | 43d | 0d |  | hoiht [50%] | 4h |
| 95 | 1.4.8.5 | 13_Báo cáo hao hụt NVL | milestone | 4d | 2011-01-18 | 2011-01-21 | 94 | 43d | 0d |  | hoiht [50%] | 16h |
| 96 | 1.4.9 | **Tích hợp dữ liệu giữa các DB của các chi nhánh** |  | 6d | 2011-01-24 | 2011-01-31 |  | 43d |  |  |  | 24h |
| 97 | 1.4.9.1 | Tool chuyển dữ liệu từ DB nội bộ về DB thuế (chuyển danh mục và các phiếu có hóa đơn) |  | 6d | 2011-01-24 | 2011-01-31 | 95 | 43d |  |  | hoiht [50%] | 24h |
| 98 | 1.5 | **Triển khai** |  | 69d? | 2010-11-22 | 2011-02-18 |  | 61d |  |  |  | 96h |
| 99 | 1.5.1 | Triển khai đợt 1 (Các chức năng của chương trình Kế Toán và phần quy đổi đơn vị tính | milestone | 4d? | 2010-11-22 | 2010-11-25 |  | 94d |  | finish no earlier than 2010-11-25 | hoiht | 32h |
| 100 | 1.5.2 | Triển khai đợt 2 (chức năng mua, bán hàng) | milestone | 4d | 2010-12-21 | 2010-12-24 |  | 44d | 1d | finish no earlier than 2010-12-24 | hoiht | 32h |
| 101 | 1.5.3 | Triển khai đợt 3 (Giá thành, tích hợp dữ liệu) | milestone | 2d? | 2011-02-17 | 2011-02-18 |  | 0d |  | finish no earlier than 2011-02-18 | Thuyttb; hoiht | 32h |
| 102 | 1.6 | Khách hàng sử dụng và kiểm tra chương trình |  | 60d | 2011-02-21 | 2011-05-13 | 101 | 0d |  |  | Thuyttb [25%] | 120h |
| 103 | 1.7 | Nghiệm thu | milestone | 1d? | 2011-05-16 | 2011-05-16 | 102 | 0d |  |  | Thuyttb | 8h |

Notes:
- 92: theo mẫu KH
- 93: theo mẫu KH
- 94: theo mẫu KH
- 95: Theo phụ lục HĐ
