# Ke hoach chi tiet - Dai Viet

Schedule from MS Project, 2010-09-02 to 2011-07-22.
SSP

## Calendars

- Standard: Mon-Fri 08:00-12:00, 13:00-17:00; Sat-Sun off. Exceptions (off unless hours are given): 2010-11-16 (Hop trien khai du an nhua Dat Hoa), 2011-01-03 (Nghỉ bù tết tây), 2011-01-31 to 2011-02-04 (Nghi tết âl), 2011-02-07 to 2011-02-09 (Nghi tết âl).

## Resources

| Resource |
| --- |
| Chautqn |
| Thaolb |
| Thuyttb |
| Hieunt |
| Hoaipt |
| hoiht |
| vienpm |
| 75 |
| khach hang |

## Schedule

| ID | WBS | Task | Type | Duration | Start | Finish | Predecessors | Total slack | Free slack | Constraint | Resources | Work |
| --- | --- | --- | --- | --- | --- | --- | --- | --- | --- | --- | --- | --- |
| 1 | 1 | **KẾ HOẠCH DỰ ÁN NHỰA ĐẠT HÒA -** |  | 222d? | 2010-09-02 | 2011-07-22 |  | 0d |  |  |  | 1485.33h |
| 2 | 1.1 | Quản lý dự án |  | 140d | 2010-09-02 | 2011-03-30 |  | 82d |  | finish no earlier than 2011-03-30 | Thuyttb [10%] | 112h |
| 3 | 1.2 | Xem xét lại yêu cầu, chuẩn bị bắt đầu dự án |  | 1.33d | 2010-10-01 | 2010-10-04 |  | 199.67d |  | start no earlier than 2010-10-01 | Thuyttb [75%] | 8h |
| 4 | 1.3 | **Lập trình chức năng** |  | 70.67d? | 2010-11-08 | 2011-02-28 |  | 104.33d |  |  |  | 745.33h |
| 5 | 1.3.1 | **Quản lý chiết khấu và khai báo giá bán** |  | 2.33d? | 2010-11-08 | 2010-11-10 |  | 143d |  |  |  | 14h |
| 6 | 1.3.1.1 | Lập hồ sơ thiết kế - Quản lý chiết khấu và khai báo giá bán |  | 0.33d? | 2010-11-08 | 2010-11-08 |  | 143d | 0d | start no earlier than 2010-11-08 | vienpm [75%] | 2h |
| 7 | 1.3.1.2 | Bảng quy định chiết khấu cho khách hàng theo từng nhóm hàng |  | 1d | 2010-11-08 | 2010-11-09 | 6 | 143d | 0d | start no earlier than 2010-10-25 | vienpm [75%] | 6h |
| 8 | 1.3.1.3 | Bảng thiết lập giá cho từng hàng hóa |  | 1d | 2010-11-09 | 2010-11-10 | 7 | 143d | 0d |  | vienpm [75%] | 6h |
| 9 | 1.3.2 | **Quy đổi đơn vị tính** |  | 10.67d? | 2010-11-10 | 2010-11-25 |  | 143d |  |  |  | 64h |
| 10 | 1.3.2.1 | Lập hồ sơ thiết kế - Quy đổi đơn vị tính và các báo cáo liên quan |  | 2d? | 2010-11-10 | 2010-11-12 | 8 | 143d | 0d | start no earlier than 2010-10-11 | vienpm [75%] | 12h |
| 11 | 1.3.2.2 | Thiết lập hệ thống quy đổi đơn vị tính (từ ĐVT1 sang ĐVT2), áp dụng chung cho tất cả các hàng hóa |  | 1.33d? | 2010-11-12 | 2010-11-15 | 10 | 143d | 0d | start no earlier than 2010-10-20 | vienpm [75%] | 8h |
| 12 | 1.3.2.3 | Sửa màn hình nhập liệu khi nhập (số lượng 1), chọn ĐVT và tự động quy đổi sang ĐVT mặc định là KG (số lượng 2) |  | 1.33d | 2010-11-15 | 2010-11-17 | 11 | 143d | 0d |  | vienpm [75%] | 8h |
| 13 | 1.3.2.4 | Thiết kế báo cáo thẻ kho hàng hóa xem theo ĐVT bất kỳ cho tất cả các mặt hàng |  | 3.33d | 2010-11-18 | 2010-11-23 | 12 | 143d | 0d |  | vienpm [75%] | 20h |
| 14 | 1.3.2.5 | Báo cáo NXT đặc thù hiển thị theo số lượng và ĐVT lúc nhập liệu (từ ĐVT bất kỳ ra KG) |  | 2.67d? | 2010-11-23 | 2010-11-25 | 13 | 143d | 0d |  | vienpm [75%] | 16h |
| 15 | 1.3.3 | **Quản lý mua hàng - bán hàng** |  | 37d? | 2010-11-08 | 2010-12-29 |  | 122d |  |  |  | 224h |
| 16 | 1.3.3.1 | Lập hồ sơ thiết kế - quản lý mua hàng bán hàng |  | 8d? | 2010-11-08 | 2010-11-18 |  | 163d | 0d | start no earlier than 2010-11-08 | Thuyttb [75%] | 48h |
| 17 | 1.3.3.2 | Quản lý hợp đồng mua hàng bán hàng |  | 4d | 2010-11-19 | 2010-11-24 | 16 | 163d |  | start no earlier than 2010-10-01 | Thuyttb [75%] | 24h |
| 18 | 1.3.3.3 | Trình bày giải pháp chi tiết phần mua hàng, bán hàng, quy đổi đơn vị tính, xử lý hoá đơn với khách hàng | milestone | 1d? | 2010-11-25 | 2010-11-25 |  | 110d | 0d | start no earlier than 2010-11-25 | Thuyttb | 8h |
| 19 | 1.3.3.4 | Quản lý hợp đồng mua hàng và bán hàng (tt) |  | 5.33d? | 2010-11-26 | 2010-12-03 | 18 | 110d | 0d |  | Thuyttb [75%] | 32h |
| 20 | 1.3.3.5 | Quản lý tình hình nhập hàng mua |  | 5.33d | 2010-12-03 | 2010-12-10 | 19 | 110d | 0d |  | Thuyttb [75%] | 32h |
| 21 | 1.3.3.6 | Quản lý hóa đơn mua hàng |  | 5.33d | 2010-12-10 | 2010-12-17 | 20 | 110d | 0d |  | Thuyttb [75%] | 32h |
| 22 | 1.3.3.7 | Quản lý lệnh xuất kho |  | 4d | 2010-12-20 | 2010-12-23 | 21 | 110d | 0d |  | Thuyttb [75%] | 24h |
| 23 | 1.3.3.8 | Lập hóa đơn hoặc phiếu giao hàng |  | 4d | 2010-12-24 | 2010-12-29 | 22 | 110d | 0d |  | Thuyttb [75%] | 24h |
| 24 | 1.3.4 | **Tích hợp dữ liệu giữa các DB của các chi nhánh** |  | 12d? | 2010-11-10 | 2010-11-26 |  | 151d |  |  |  | 48h |
| 25 | 1.3.4.1 | Lập hồ sơ thiết kế - Tích hợp dữ liệu |  | 2d? | 2010-11-10 | 2010-11-11 |  | 160.6d | 0d | start no earlier than 2010-11-10 | Hoaipt [50%] | 8h |
| 26 | 1.3.4.2 | - Phân quyền chức năng tích hợp trong Quản lý người dùng |  | 0.4d | 2010-11-12 | 2010-11-12 | 25 | 160.6d | 0d |  | Hoaipt [50%] | 1.6h |
| 27 | 1.3.4.3 | - Thiết kê form cấu hình điều kiện tích hợp |  | 2d? | 2010-11-12 | 2010-11-17 | 26 | 151d | 0d |  | Hoaipt [50%] | 8h |
| 28 | 1.3.4.4 | - Thiết kế form login vào tool chuyển dữ liệu từ DB nội bộ sang DB thuế |  | 1d? | 2010-11-17 | 2010-11-18 | 27 | 151d | 0d |  | Hoaipt [50%] | 4h |
| 29 | 1.3.4.5 | Thiết kế form màn hình tích hợp dữ liệu DB nội bộ sang DB thuế |  | 5d? | 2010-11-18 | 2010-11-25 | 28 | 151d | 0d |  | Hoaipt [50%] | 20h |
| 30 | 1.3.4.6 | Xây dựng chức năng cập nhật lại số phiếu khi số phiếu bị xóa làm gián đoạn sự liên tục. |  | 1d? | 2010-11-25 | 2010-11-26 | 29 | 151d | 0d |  | Hoaipt [50%] | 4h |
| 31 | 1.3.4.7 | Đánh dấu dữ liệu đã tích hợp |  | 0.6d? | 2010-11-26 | 2010-11-26 | 30 | 151d | 0d |  | Hoaipt [50%] | 2.4h |

| ID | WBS | Task | Type | Duration | Start | Finish | Predecessors | Total slack | Free slack | Constraint | Resources | Work |
| --- | --- | --- | --- | --- | --- | --- | --- | --- | --- | --- | --- | --- |
| 32 | 1.3.5 | **Xử lý hóa đơn** |  | 10d? | 2010-11-29 | 2010-12-10 |  | 151d |  |  |  | 40h |
| 33 | 1.3.5.1 | Lập hồ sơ thiết kế phần xử lý hóa đơn |  | 2d? | 2010-11-29 | 2010-11-30 | 31 | 151d | 0d |  | Hoaipt [50%] | 8h |
| 34 | 1.3.5.2 | Lập hóa đơn cho nhiều phiếu giao hàng |  | 4d | 2010-12-01 | 2010-12-06 | 33 | 151d | 0d | start no earlier than 2010-11-22 | Hoaipt [50%] | 16h |
| 35 | 1.3.5.3 | Xử lý tách hóa đơn khi số mặt hàng trong hóa đơn vượt qúa số lượng cho phép |  | 4d | 2010-12-07 | 2010-12-10 | 34 | 151d |  |  | Hoaipt [50%] | 16h |
| 36 | 1.3.6 | **Báo cáo** |  | 19d? | 2010-11-26 | 2010-12-22 |  | 143d |  |  |  | 114h |
| 37 | 1.3.6.1 | 1_Báo cáo doanh số và công nợ |  | 1d | 2010-11-26 | 2010-11-26 | 14 | 143d | 0d | start no earlier than 2010-10-29 | vienpm [75%] | 6h |
| 38 | 1.3.6.2 | 2_Hóa đơn kiêm phiếu xuất kho |  | 1.33d | 2010-11-29 | 2010-11-30 | 37 | 143d | 0d |  | vienpm [75%] | 8h |
| 39 | 1.3.6.3 | 9_Báo cáo nhập kho thành phẩm từ sản xuất |  | 1d | 2010-11-30 | 2010-12-01 | 38 | 143d | 0d |  | vienpm [75%] | 6h |
| 40 | 1.3.6.4 | 11_Báo cáo doanh thu theo từng đơn vị |  | 0.33d | 2010-12-01 | 2010-12-01 | 39 | 143d | 0d |  | vienpm [75%] | 2h |
| 41 | 1.3.6.5 | 12_sổ theo dõi hợp đồng nhập khẩu |  | 0.67d | 2010-12-01 | 2010-12-02 | 40 | 143d | 0d |  | vienpm [75%] | 4h |
| 42 | 1.3.6.6 | Mẫu in phiếu nhập xuất TSCĐ thể hiện thông tin người giao, người nhận |  | 1.33d? | 2010-12-02 | 2010-12-03 | 41 | 143d | 0d |  | vienpm [75%] | 8h |
| 43 | 1.3.6.7 | Báo cáo công nợ theo từng hợp đồng, hóa đơn |  | 2.67d | 2010-12-03 | 2010-12-08 | 42 | 143d | 0d |  | vienpm [75%] | 16h |
| 44 | 1.3.6.8 | Báo cáo công nợ đã thanh toán và công nợ đến hạn |  | 1.33d? | 2010-12-08 | 2010-12-09 | 43 | 143d | 0d |  | vienpm [75%] | 8h |
| 45 | 1.3.6.9 | Báo cáo KQHDKD (theo mẫu QĐ15) có thêm cột cộng lũy kế |  | 0.67d | 2010-12-09 | 2010-12-10 | 44 | 143d | 0d |  | vienpm [75%] | 4h |
| 46 | 1.3.6.10 | Báo cáo phân tích khấu hao TSCĐ theo nhóm |  | 1.33d? | 2010-12-10 | 2010-12-13 | 45 | 143d | 0d |  | vienpm [75%] | 8h |
| 47 | 1.3.6.11 | 3_Thư đòi nợ |  | 3.33d | 2010-12-13 | 2010-12-16 | 46 | 143d | 0d |  | vienpm [75%] | 20h |
| 48 | 1.3.6.12 | 6_Đơn đặt hàng |  | 1.33d? | 2010-12-17 | 2010-12-20 | 47 | 143d | 0d |  | vienpm [75%] | 8h |
| 49 | 1.3.6.13 | 4_Lệnh xuất kho |  | 1.33d | 2010-12-20 | 2010-12-21 | 48 | 143d | 0d |  | vienpm [75%] | 8h |
| 50 | 1.3.6.14 | 5_Phiếu giao hàng |  | 1.33d | 2010-12-21 | 2010-12-22 | 49 | 143d |  |  | vienpm [75%] | 8h |
| 51 | 1.3.7 | **Chức năng giá thành** |  | 33.67d? | 2010-12-30 | 2011-02-28 |  | 104.33d |  |  |  | 241.33h |
| 52 | 1.3.7.1 | Lập hồ sơ thiết kế - Chức năng giá thành |  | 5.33d? | 2010-12-30 | 2011-01-07 | 23 | 110d | 0d |  | Thuyttb [75%] | 32h |
| 53 | 1.3.7.2 | Trình bày giải pháp chi tiết giá thành | milestone | 0.67d? | 2011-01-07 | 2011-01-07 | 52 | 110d | 0d | finish no earlier than 2011-01-07 | Thuyttb | 5.33h |
| 54 | 1.3.7.3 | Tập hợp chi phí theo nhóm mặt hàng hoặc xưởng, phân bổ cho từng mặt hàng theo trọng lượng thành phẩm nhập kho |  | 16d | 2011-01-10 | 2011-02-10 | 53 | 110d | 0d |  | Thuyttb [75%] | 96h |
| 55 | 1.3.7.4 | Lập hồ sơ thiết kế cho các báo cáo 7,8,10,13 |  | 2d? | 2011-02-11 | 2011-02-14 | 54 | 114d |  |  | Thuyttb [75%] | 12h |
| 56 | 1.3.7.5 | 7_Báo cáo giá thành sản phẩm theo đơn vị |  | 2d? | 2011-02-11 | 2011-02-14 | 54 | 110d | 0d |  | Hoaipt [50%] | 8h |
| 57 | 1.3.7.6 | 8_Báo cáo doanh thu chi phí theo từng cửa hàng |  | 4d | 2011-02-15 | 2011-02-18 | 56 | 110d |  |  | Hoaipt [50%] | 16h |
| 58 | 1.3.7.7 | Triển khai đợt 2 (mua hàng, bán hàng, quy đổi DVT) |  | 4d? | 2011-02-14 | 2011-02-17 |  | 104.33d | 0d | start no earlier than 2011-02-14 | Thuyttb | 32h |
| 59 | 1.3.7.8 | 10_Báo cáo lãi lỗ theo nhóm hàng |  | 3.33d | 2011-02-18 | 2011-02-23 | 58 | 104.33d | 0d |  | Thuyttb [75%] | 20h |
| 60 | 1.3.7.9 | 13_Báo cáo hao hụt NVL |  | 3.33d | 2011-02-23 | 2011-02-28 | 59 | 104.33d |  |  | Thuyttb [75%] | 20h |

Notes:
- 37: theo mẫu KH
- 38: in rơi
- 39: theo mẫu KH
- 42: SSP tự thiết kế
- 43: SSP tự thiết kế
- 44: SSP tự thiết kế
- 45: Sửa mẫu QĐ15
- 46: SSP tự thiết kế
- 47: theo mẫu KH
- 48: in rơi
- 49: theo mẫu KH
- 50: theo mẫu KH
- 56: theo mẫu KH
- 57: theo mẫu KH
- 59: theo mẫu KH
- 60: Theo phụ lục HĐ

| ID | WBS | Task | Type | Duration | Start | Finish | Predecessors | Total slack | Free slack | Constraint | Resources | Work |
| --- | --- | --- | --- | --- | --- | --- | --- | --- | --- | --- | --- | --- |
| 61 | 1.4 | **Test** |  | 87d? | 2010-11-26 | 2011-04-08 |  | 22d |  |  |  | 380h |
| 62 | 1.4.1 | **Quy đổi đơn vị tính** |  | 4d? | 2010-11-26 | 2010-12-01 |  | 146d |  |  |  | 16h |
| 63 | 1.4.1.1 | Thiết lập hệ thống quy đổi đơn vị tính (từ ĐVT1 sang ĐVT2), áp dụng chung cho tất cả các hàng hóa |  | 1d? | 2010-11-26 | 2010-11-26 |  | 146d | 0d | start no earlier than 2010-11-26 | hoiht [50%] | 4h |
| 64 | 1.4.1.2 | Sửa màn hình nhập liệu khi nhập (số lượng 1), chọn ĐVT và tự động quy đổi sang ĐVT mặc định là KG (số lượng 2) |  | 1d | 2010-11-29 | 2010-11-29 | 63 | 146d | 0d |  | hoiht [50%] | 4h |
| 65 | 1.4.1.3 | Thiết kế báo cáo thẻ kho hàng hóa xem theo ĐVT bất kỳ cho tất cả các mặt hàng |  | 1d | 2010-11-30 | 2010-11-30 | 64 | 146d | 0d |  | hoiht [50%] | 4h |
| 66 | 1.4.1.4 | Báo cáo NXT đặc thù hiển thị theo số lượng và ĐVT lúc nhập liệu (từ ĐVT bất kỳ ra KG) |  | 1d? | 2010-12-01 | 2010-12-01 | 65 | 146d | 0d |  | hoiht [50%] | 4h |
| 67 | 1.4.2 | **Quản lý mua hàng và bán hàng và chiết khấu** |  | 19d | 2010-12-02 | 2010-12-28 |  | 18d |  |  |  | 64h |
| 68 | 1.4.2.1 | Quản lý hợp đồng mua hàng và bán hàng |  | 5d | 2010-12-02 | 2010-12-08 | 66 | 146d | 0d | start no earlier than 2010-11-23 | hoiht [50%] | 20h |
| 69 | 1.4.2.2 | Bảng quy định chiết khấu cho khách hàng theo từng nhóm hàng |  | 0.5d | 2010-12-09 | 2010-12-09 | 68 | 146d | 0d | start no earlier than 2010-10-28 | hoiht [50%] | 2h |
| 70 | 1.4.2.3 | Bảng thiết lập giá cho từng hàng hóa |  | 0.5d | 2010-12-09 | 2010-12-09 | 69 | 146d | 0d |  | hoiht [50%] | 2h |
| 71 | 1.4.2.4 | Quản lý tình hình nhập hàng mua |  | 3d | 2010-12-10 | 2010-12-14 | 70 | 146d | 0d | start no earlier than 2010-10-11 | hoiht [50%] | 12h |
| 72 | 1.4.2.5 | Quản lý hóa đơn mua hàng |  | 3d | 2010-12-15 | 2010-12-17 | 71 | 146d |  | start no earlier than 2010-10-14 | hoiht [50%] | 12h |
| 73 | 1.4.2.6 | Quản lý lệnh xuất kho |  | 2d | 2010-12-23 | 2010-12-24 | 104 | 3d | 0d | start no earlier than 2010-10-23 | hoiht [50%] | 8h |
| 74 | 1.4.2.7 | Lập hóa đơn hoặc phiếu giao hàng |  | 2d | 2010-12-27 | 2010-12-28 | 73 | 3d | 0d | start no earlier than 2010-11-01 | hoiht [50%] | 8h |
| 75 | 1.4.3 | **Xử lý hóa đơn** |  | 4d | 2010-12-29 | 2011-01-04 |  | 3d |  |  |  | 16h |
| 76 | 1.4.3.1 | Lập hóa đơn cho nhiều phiếu giao hàng |  | 2d | 2010-12-29 | 2010-12-30 | 74 | 3d | 0d | start no earlier than 2010-12-06 | hoiht [50%] | 8h |
| 77 | 1.4.3.2 | Xử lý tách hóa đơn khi số mặt hàng trong hóa đơn vượt qúa số lượng cho phép |  | 2d | 2010-12-31 | 2011-01-04 | 76 | 3d | 0d |  | hoiht [50%] | 8h |
| 78 | 1.4.4 | **Bao cao** |  | 14d? | 2011-01-05 | 2011-01-24 |  | 3d |  |  |  | 56h |
| 79 | 1.4.4.1 | 1_Báo cáo doanh số và công nợ |  | 1d | 2011-01-05 | 2011-01-05 | 77 | 3d | 0d |  | hoiht [50%] | 4h |
| 80 | 1.4.4.2 | 2_Hóa đơn kiêm phiếu xuất kho |  | 1d | 2011-01-06 | 2011-01-06 | 79 | 3d | 0d |  | hoiht [50%] | 4h |
| 81 | 1.4.4.3 | 9_Báo cáo nhập kho thành phẩm từ sản xuất |  | 1d | 2011-01-07 | 2011-01-07 | 80 | 3d | 0d |  | hoiht [50%] | 4h |
| 82 | 1.4.4.4 | 11_Báo cáo doanh thu theo từng đơn vị |  | 1d | 2011-01-10 | 2011-01-10 | 81 | 3d | 0d |  | hoiht [50%] | 4h |
| 83 | 1.4.4.5 | 12_sổ theo dõi hợp đồng nhập khẩu |  | 1d | 2011-01-11 | 2011-01-11 | 82 | 3d | 0d |  | hoiht [50%] | 4h |
| 84 | 1.4.4.6 | Mẫu in phiếu nhập xuất TSCĐ thể hiện thông tin người giao, người nhận |  | 1d? | 2011-01-12 | 2011-01-12 | 83 | 3d | 0d |  | hoiht [50%] | 4h |
| 85 | 1.4.4.7 | Báo cáo công nợ theo từng hợp đồng, hóa đơn |  | 1d | 2011-01-13 | 2011-01-13 | 84 | 3d | 0d |  | hoiht [50%] | 4h |
| 86 | 1.4.4.8 | Báo cáo công nợ đã thanh toán và công nợ đến hạn |  | 1d? | 2011-01-14 | 2011-01-14 | 85 | 3d | 0d |  | hoiht [50%] | 4h |
| 87 | 1.4.4.9 | Báo cáo KQHDKD (theo mẫu QĐ15) có thêm cột cộng lũy kế |  | 1d | 2011-01-17 | 2011-01-17 | 86 | 3d | 0d |  | hoiht [50%] | 4h |
| 88 | 1.4.4.10 | Báo cáo phân tích khấu hao TSCĐ theo nhóm |  | 1d? | 2011-01-18 | 2011-01-18 | 87 | 3d | 0d |  | hoiht [50%] | 4h |
| 89 | 1.4.4.11 | 4_Lệnh xuất kho |  | 1d | 2011-01-19 | 2011-01-19 | 88 | 3d | 0d |  | hoiht [50%] | 4h |
| 90 | 1.4.4.12 | 5_Phiếu giao hàng |  | 1d | 2011-01-20 | 2011-01-20 | 89 | 3d | 0d |  | hoiht [50%] | 4h |
| 91 | 1.4.4.13 | 6_Đơn đặt hàng |  | 1d? | 2011-01-21 | 2011-01-21 | 90 | 3d | 0d |  | hoiht [50%] | 4h |
| 92 | 1.4.4.14 | 3_Thư đòi nợ | milestone | 1d | 2011-01-24 | 2011-01-24 | 91 | 3d | 0d |  | hoiht [50%] | 4h |
| 93 | 1.4.5 | Dự phòng |  | 9d | 2011-01-25 | 2011-02-16 | 92 | 3d | 0d | finish no earlier than 2010-12-18 |  | 72h |

Notes:
- 79: theo mẫu KH
- 80: in rơi
- 81: theo mẫu KH
- 84: SSP tự thiết kế
- 85: SSP tự thiết kế
- 86: SSP tự thiết kế
- 87: Sửa mẫu QĐ15
- 88: SSP tự thiết kế
- 89: theo mẫu KH
- 90: theo mẫu KH
- 91: in rơi
- 92: theo mẫu KH

| ID | WBS | Task | Type | Duration | Start | Finish | Predecessors | Total slack | Free slack | Constraint | Resources | Work |
| --- | --- | --- | --- | --- | --- | --- | --- | --- | --- | --- | --- | --- |
| 94 | 1.4.6 | **Chức năng giá thành** |  | 19d? | 2011-02-24 | 2011-03-22 |  | 3d |  |  |  | 76h |
| 95 | 1.4.6.1 | Tập hợp chi phí theo nhóm mặt hàng hoặc xưởng, phân bổ cho từng mặt hàng theo trọng lượng thành phẩm nhập kho |  | 12d | 2011-02-24 | 2011-03-11 | 105 | 3d | 0d | start no earlier than 2010-12-27 | hoiht [50%] | 48h |
| 96 | 1.4.6.2 | 7_Báo cáo giá thành sản phẩm theo đơn vị |  | 1d? | 2011-03-14 | 2011-03-14 | 95 | 3d | 0d |  | hoiht [50%] | 4h |
| 97 | 1.4.6.3 | 8_Báo cáo doanh thu chi phí theo từng cửa hàng |  | 1d | 2011-03-15 | 2011-03-15 | 96 | 3d | 0d |  | hoiht [50%] | 4h |
| 98 | 1.4.6.4 | 10_Báo cáo lãi lỗ theo nhóm hàng |  | 1d | 2011-03-16 | 2011-03-16 | 97 | 3d | 0d |  | hoiht [50%] | 4h |
| 99 | 1.4.6.5 | 13_Báo cáo hao hụt NVL |  | 4d | 2011-03-17 | 2011-03-22 | 98 | 3d | 0d |  | hoiht [50%] | 16h |
| 100 | 1.4.7 | **Tích hợp dữ liệu giữa các DB của các chi nhánh** |  | 6d | 2011-03-23 | 2011-03-30 |  | 3d |  |  |  | 24h |
| 101 | 1.4.7.1 | Tool chuyển dữ liệu từ DB nội bộ về DB thuế (chuyển danh mục và các phiếu có hóa đơn) | milestone | 6d | 2011-03-23 | 2011-03-30 | 99 | 3d | 0d |  | hoiht [50%] | 24h |
| 102 | 1.4.8 | Dự phòng |  | 7d | 2011-03-31 | 2011-04-08 | 101 | 3d | 0d | start no earlier than 2011-03-02 |  | 56h |
| 103 | 1.5 | **Triển khai** |  | 75d? | 2010-12-20 | 2011-04-14 |  | 3d |  |  |  | 96h |
| 104 | 1.5.1 | Triển khai đợt 1 (Các chức năng của chương trình Kế Toán) | milestone | 3d? | 2010-12-20 | 2010-12-22 |  | 3d | 0d | finish no earlier than 2010-12-22 | hoiht | 24h |
| 105 | 1.5.2 | Triển khai đợt 2 (chức năng mua, bán hàng, quy đổi đơn vị tính) | milestone | 5d | 2011-02-17 | 2011-02-23 | 93 | 3d | 0d | finish no earlier than 2011-02-23 | hoiht | 40h |
| 106 | 1.5.3 | Triển khai đợt 3 (Giá thành, tích hợp dữ liệu) | milestone | 4d? | 2011-04-11 | 2011-04-14 | 102 | 3d | 0d | start no earlier than 2011-04-04 | Thuyttb [50%]; hoiht [50%] | 32h |
| 107 | 1.6 | Khách hàng sử dụng và kiểm tra chương trình |  | 68d | 2011-04-15 | 2011-07-19 | 106 | 3d |  |  | Thuyttb [25%] | 136h |
| 108 | 1.7 | Nghiệm thu | milestone | 1d? | 2011-07-22 | 2011-07-22 |  | 0d |  | start no earlier than 2011-07-22 | Thuyttb | 8h |

Notes:
- 96: theo mẫu KH
- 97: theo mẫu KH
- 98: theo mẫu KH
- 99: Theo phụ lục HĐ
